# load-board-18

Schedule from MS Project, 2022-01-31 to 2023-09-19, costs in €.
LoadBoard18
TwoSoft LLC

## Calendars

- Standard: Mon-Fri 08:00-12:00, 13:00-17:00; Sat-Sun off.

## Resources

| Resource | Rate |
| --- | --- |
| Софверски архитект | 70 |
| Проектен менаџер | 50 |
| Бизнис аналитичар - Сениор | 50 |
| Сопственик на продукт | 50 |
| Scrum Мастер | 50 |
| БЕ програмер 1 - Сениор | 80 |
| БЕ програмер 2 - Сениор | 80 |
| ФЕ програмер 1 - Медиор | 43.75 |
| ФЕ програмер 2 - Сениор | 60 |
| Софтвер тестер - Сениор | 30 |
| ДО инженер - Сениор | 50 |
| Фиксна цена |  |

## Schedule

| ID | WBS | Task | Type | Duration | Start | Finish | Predecessors | Total slack | Free slack | Constraint | Resources | Work | Cost | Zadaca (latinica) |
| --- | --- | --- | --- | --- | --- | --- | --- | --- | --- | --- | --- | --- | --- | --- |
| 1 | 1 | **Управување со проект** |  | 427d | 2022-01-31 | 2023-09-19 |  | 0d |  |  |  | 3416h | 170,800 | Upravuvanje so proekt |
| 2 | 1.1 | Континуирано управување |  | 427d | 2022-01-31 | 2023-09-19 |  | 0d |  | finish no earlier than 2023-09-19 | Проектен менаџер | 3416h | 170,800 | Kontinuirano upravuvanje |
| 3 | 2 | **Околина & КИ/КИ** |  | 18d | 2022-02-01 | 2022-02-24 |  | 360d | 351d |  |  | 144h | 7,200 | Okolina & KI/KI |
| 4 | 2.1 | Поставување на безбедност, корисници, рољи и пермисии |  | 2d | 2022-02-01 | 2022-02-02 |  | 366d | 0d |  | ДО инженер - Сениор | 16h | 800 | Postavuvanje na bezbednost, korisnici, rolji i permisii |
| 5 | 2.2 | Поставување на AWS развојна околина |  | 5d | 2022-02-03 | 2022-02-09 | 4 | 366d | 0d |  | ДО инженер - Сениор | 40h | 2,000 | Postavuvanje na AWS razvojna okolina |
| 6 | 2.3 | Поставување на AWS тест околина |  | 1d | 2022-02-10 | 2022-02-10 | 4, 5 | 369d | 3d |  | ДО инженер - Сениор | 8h | 400 | Postavuvanje na AWS test okolina |
| 7 | 2.4 | Поставување на AWS клиентска околина |  | 1d | 2022-02-11 | 2022-02-11 | 4, 5 | 368d | 2d |  | ДО инженер - Сениор | 8h | 400 | Postavuvanje na AWS klientska okolina |
| 8 | 2.5 | Поставување на AWS пред-продукциска околина |  | 1d | 2022-02-14 | 2022-02-14 | 4, 5 | 367d | 1d |  | ДО инженер - Сениор | 8h | 400 | Postavuvanje na AWS pred-produkciska okolina |
| 9 | 2.6 | Поставување на AWS продукциска околина |  | 1d | 2022-02-15 | 2022-02-15 | 4, 5 | 366d | 0d |  | ДО инженер - Сениор | 8h | 400 | Postavuvanje na AWS produkciska okolina |
| 10 | 2.7 | Создавање дијаграм на околини |  | 1d | 2022-02-16 | 2022-02-16 | 5, 6, 7, 8, 9 | 366d |  |  | ДО инженер - Сениор | 8h | 400 | Sozdavanje dijagram na okolini |
| 11 | 2.8 | Поставување на репозиториум за код |  | 1d | 2022-02-17 | 2022-02-17 |  | 361d | 0d |  | ДО инженер - Сениор | 8h | 400 | Postavuvanje na repozitorium za kod |
| 12 | 2.9 | Развој на КИКИ pipeline и процедури |  | 4d | 2022-02-18 | 2022-02-23 | 11 | 361d |  |  | ДО инженер - Сениор | 32h | 1,600 | Razvoj na KIKI pipeline i proceduri |
| 13 | 2.10 | Закупување на домен и сертификати |  | 1d | 2022-02-24 | 2022-02-24 |  | 360d |  |  | ДО инженер - Сениор | 8h | 400 | Zakupuvanje na domen i sertifikati |
| 14 | 3 | **Развој на веб апликација** |  | 355d | 2022-02-21 | 2023-06-30 |  | 9d | 0d |  | Scrum Мастер; Сопственик на продукт | 25160h | 1,378,750 | Razvoj na veb aplikacija |
| 15 | 3.1 | Иницијализација на ССП документ |  | 5d | 2022-02-21 | 2022-02-25 |  | 9d | 0d | start no earlier than 2022-02-21 | Бизнис аналитичар - Сениор | 40h | 2,000 | Inicijalizacija na SSP dokument |
| 16 | 3.2 | Дефинирање на глобален визуелен дизајн и визуелни концепти |  | 5d | 2022-02-28 | 2022-03-04 | 15 | 9d | 0d |  | Бизнис аналитичар - Сениор | 40h | 2,000 | Definiranje na globalen vizuelen dizajn i vizuelni koncepti |
| 17 | 3.3 | Иницијализација на ДДС документ |  | 5d | 2022-02-28 | 2022-03-04 | 15 | 9d | 0d |  | Софверски архитект | 40h | 2,800 | Inicijalizacija na DDS dokument |
| 18 | 3.4 | Иницијализација на ПОКС документ |  | 5d | 2022-02-28 | 2022-03-04 | 15 | 9d | 0d | start no earlier than 2022-02-28 | Софтвер тестер - Сениор | 40h | 1,200 | Inicijalizacija na POKS dokument |
| 19 | 3.5 | Иницијален план за развој | milestone | 0d | 2022-03-04 | 2022-03-04 | 15, 16, 17, 18 | 9d | 0d |  |  |  |  | Inicijalen plan za razvoj |
| 20 | 3.6 | **Модул за најава и регистрација** |  | 40d | 2022-03-07 | 2022-04-29 | 19 | 9d | 0d |  |  | 2240h | 126,000 | Modul za najava i registracija |
| 21 | 3.6.1 | ССП активност |  | 40d | 2022-03-07 | 2022-04-29 |  | 9d |  |  | Бизнис аналитичар - Сениор | 320h | 16,000 | SSP aktivnost |
| 22 | 3.6.2 | Преден (визуелен) дизајн и развој |  | 40d | 2022-03-07 | 2022-04-29 |  | 9d |  |  | ФЕ програмер 1 - Медиор; ФЕ програмер 2 - Сениор | 640h | 33,200 | Preden (vizuelen) dizajn i razvoj |
| 23 | 3.6.3 | **Позадински развој** |  | 40d | 2022-03-07 | 2022-04-29 |  | 9d |  |  |  | 640h | 51,200 | Pozadinski razvoj |
| 24 | 3.6.3.1 | Интеграција со AWS Cognito |  | 30d | 2022-03-07 | 2022-04-15 |  | 19d |  |  | БЕ програмер 1 - Сениор; БЕ програмер 2 - Сениор | 480h | 38,400 | Integracija so AWS Cognito |
| 25 | 3.6.3.2 | Валидирање на кориснички броеви преку FMCSA |  | 10d | 2022-04-18 | 2022-04-29 |  | 9d |  |  | БЕ програмер 1 - Сениор; БЕ програмер 2 - Сениор | 160h | 12,800 | Validiranje na korisnički broevi preku FMCSA |
| 26 | 3.6.4 | Тестирање и спецификација на ПТС |  | 40d | 2022-03-07 | 2022-04-29 |  | 9d |  |  | Софтвер тестер - Сениор | 320h | 9,600 | Testiranje i specifikacija na PTS |
| 27 | 3.6.5 | DevOps активности |  | 40d | 2022-03-07 | 2022-04-29 |  | 9d |  |  | ДО инженер - Сениор | 320h | 16,000 | DevOps aktivnosti |
| 28 | 3.7 | Испорака и консултации со спонзор | milestone | 0d | 2022-04-29 | 2022-04-29 | 20 | 314d |  |  |  |  |  | Isporaka i konsultacii so sponzor |

| ID | WBS | Task | Type | Duration | Start | Finish | Predecessors | Total slack | Free slack | Constraint | Resources | Work | Cost |
| --- | --- | --- | --- | --- | --- | --- | --- | --- | --- | --- | --- | --- | --- |
| 29 | 3.8 | **Модул за рути и градови** |  | 65d | 2022-05-02 | 2022-07-29 | 20 | 9d | 0d |  |  | 3640h | 204,750 |
| 30 | 3.8.1 | ССП активност |  | 65d | 2022-05-02 | 2022-07-29 |  | 9d |  |  | Бизнис аналитичар - Сениор | 520h | 26,000 |
| 31 | 3.8.2 | Преден (визуелен) дизајн и развој |  | 65d | 2022-05-02 | 2022-07-29 |  | 9d |  |  | ФЕ програмер 1 - Медиор; ФЕ програмер 2 - Сениор | 1040h | 53,950 |
| 32 | 3.8.3 | **Позадински развој** |  | 65d | 2022-05-02 | 2022-07-29 |  | 9d |  |  |  | 1040h | 83,200 |
| 33 | 3.8.3.1 | Развој на база на податоци (заедно со податоци) за сите градови, општини, држави, поштенски кодови и географски локации |  | 30d | 2022-05-02 | 2022-06-10 |  | 44d |  |  | БЕ програмер 1 - Сениор; БЕ програмер 2 - Сениор | 480h | 38,400 |
| 34 | 3.8.3.2 | Поставување на OpenStreetMap софтвер |  | 10d | 2022-06-13 | 2022-06-24 |  | 34d |  | start no earlier than 2022-06-05 | БЕ програмер 1 - Сениор; БЕ програмер 2 - Сениор | 160h | 12,800 |
| 35 | 3.8.3.3 | Интеграција со OpenStreetMap |  | 10d | 2022-06-27 | 2022-07-08 |  | 24d |  | start no earlier than 2022-06-27 | БЕ програмер 1 - Сениор; БЕ програмер 2 - Сениор | 160h | 12,800 |
| 36 | 3.8.3.4 | Калкулација на рути и претпоставена цена на трошок |  | 15d | 2022-07-11 | 2022-07-29 |  | 9d |  | start no earlier than 2022-07-01 | БЕ програмер 1 - Сениор; БЕ програмер 2 - Сениор | 240h | 19,200 |
| 37 | 3.8.4 | Тестирање и спецификација на ПТС |  | 65d | 2022-05-02 | 2022-07-29 |  | 9d |  |  | Софтвер тестер - Сениор | 520h | 15,600 |
| 38 | 3.8.5 | DevOps активности |  | 65d | 2022-05-02 | 2022-07-29 |  | 9d |  |  | ДО инженер - Сениор | 520h | 26,000 |
| 39 | 3.9 | Испорака и консултации со спонзор | milestone | 0d | 2022-07-29 | 2022-07-29 | 29 | 249d |  |  |  |  |  |
| 40 | 3.10 | **Модул за товари** |  | 110d | 2022-08-01 | 2022-12-30 | 29 | 9d | 0d |  |  | 6160h | 346,500 |
| 41 | 3.10.1 | ССП активност |  | 110d | 2022-08-01 | 2022-12-30 |  | 9d |  |  | Бизнис аналитичар - Сениор | 880h | 44,000 |
| 42 | 3.10.2 | Преден (визуелен) дизајн и развој |  | 110d | 2022-08-01 | 2022-12-30 |  | 9d |  |  | ФЕ програмер 1 - Медиор; ФЕ програмер 2 - Сениор | 1760h | 91,300 |
| 43 | 3.10.3 | **Позадински развој** |  | 110d | 2022-08-01 | 2022-12-30 |  | 9d |  |  |  | 1760h | 140,800 |
| 44 | 3.10.3.1 | Пребарување и филтрирање според критерии |  | 40d | 2022-08-01 | 2022-09-23 |  | 79d |  |  | БЕ програмер 1 - Сениор; БЕ програмер 2 - Сениор | 640h | 51,200 |
| 45 | 3.10.3.2 | Објавување на товари |  | 40d | 2022-09-26 | 2022-11-18 |  | 39d |  |  | БЕ програмер 1 - Сениор; БЕ програмер 2 - Сениор | 640h | 51,200 |
| 46 | 3.10.3.3 | Водење на статистика според тип на товар и локации |  | 20d | 2022-11-21 | 2022-12-16 |  | 19d |  |  | БЕ програмер 1 - Сениор; БЕ програмер 2 - Сениор | 320h | 25,600 |
| 47 | 3.10.3.4 | Аларми и известувања базирани на критерии за пребарување |  | 10d | 2022-12-19 | 2022-12-30 |  | 9d |  |  | БЕ програмер 1 - Сениор; БЕ програмер 2 - Сениор | 160h | 12,800 |
| 48 | 3.10.4 | Тестирање и спецификација на ПТС |  | 110d | 2022-08-01 | 2022-12-30 |  | 9d |  |  | Софтвер тестер - Сениор | 880h | 26,400 |
| 49 | 3.10.5 | DevOps активности |  | 110d | 2022-08-01 | 2022-12-30 |  | 9d |  |  | ДО инженер - Сениор | 880h | 44,000 |
| 50 | 3.11 | Испорака и консултации со спонзор | milestone | 0d | 2022-12-30 | 2022-12-30 | 40 | 139d |  |  |  |  |  |
| 51 | 3.12 | **Модул за камиони** |  | 85d | 2023-01-02 | 2023-04-28 | 40 | 9d | 0d |  |  | 4760h | 267,750 |
| 52 | 3.12.1 | ССП активност |  | 85d | 2023-01-02 | 2023-04-28 |  | 9d |  |  | Бизнис аналитичар - Сениор | 680h | 34,000 |
| 53 | 3.12.2 | Преден (визуелен) дизајн и развој |  | 85d | 2023-01-02 | 2023-04-28 |  | 9d |  |  | ФЕ програмер 1 - Медиор; ФЕ програмер 2 - Сениор | 1360h | 70,550 |

Notes:
- 29: Zadaca (latinica): Modul za ruti i gradovi
- 30: Zadaca (latinica): SSP aktivnost
- 31: Zadaca (latinica): Preden (vizuelen) dizajn i razvoj
- 32: Zadaca (latinica): Pozadinski razvoj
- 33: Zadaca (latinica): Razvoj na baza na podatoci (zaedno so podatoci) za site gradovi, opštini, državi, poštenski kodovi i geografski lokacii
- 34: Zadaca (latinica): Postavuvanje na OpenStreetMap softver
- 35: Zadaca (latinica): Integracija so OpenStreetMap
- 36: Zadaca (latinica): Kalkulacija na ruti i pretpostavena cena na trošok
- 37: Zadaca (latinica): Testiranje i specifikacija na PTS
- 38: Zadaca (latinica): DevOps aktivnosti
- 39: Zadaca (latinica): Isporaka i konsultacii so sponzor
- 40: Zadaca (latinica): Modul za tovari
- 41: Zadaca (latinica): SSP aktivnost
- 42: Zadaca (latinica): Preden (vizuelen) dizajn i razvoj
- 43: Zadaca (latinica): Pozadinski razvoj
- 44: Zadaca (latinica): Prebaruvanje i filtriranje spored kriterii
- 45: Zadaca (latinica): Objavuvanje na tovari
- 46: Zadaca (latinica): Vodenje na statistika spored tip na tovar i lokacii
- 47: Zadaca (latinica): Alarmi i izvestuvanja bazirani na kriterii za prebaruvanje
- 48: Zadaca (latinica): Testiranje i specifikacija na PTS
- 49: Zadaca (latinica): DevOps aktivnosti
- 50: Zadaca (latinica): Isporaka i konsultacii so sponzor
- 51: Zadaca (latinica): Modul za kamioni
- 52: Zadaca (latinica): SSP aktivnost
- 53: Zadaca (latinica): Preden (vizuelen) dizajn i razvoj

| ID | WBS | Task | Type | Duration | Start | Finish | Predecessors | Total slack | Free slack | Resources | Work | Cost |
| --- | --- | --- | --- | --- | --- | --- | --- | --- | --- | --- | --- | --- |
| 54 | 3.12.3 | **Позадински развој** |  | 85d | 2023-01-02 | 2023-04-28 |  | 9d |  |  | 1360h | 108,800 |
| 55 | 3.12.3.1 | Пребарување и филтрирање според критерии |  | 35d | 2023-01-02 | 2023-02-17 |  | 59d |  | БЕ програмер 1 - Сениор; БЕ програмер 2 - Сениор | 560h | 44,800 |
| 56 | 3.12.3.2 | Споделување на камиони и посакувани локации |  | 30d | 2023-02-20 | 2023-03-31 |  | 29d |  | БЕ програмер 1 - Сениор; БЕ програмер 2 - Сениор | 480h | 38,400 |
| 57 | 3.12.3.3 | Водење статистика според тип на приколка и локации |  | 15d | 2023-04-03 | 2023-04-21 |  | 14d |  | БЕ програмер 1 - Сениор; БЕ програмер 2 - Сениор | 240h | 19,200 |
| 58 | 3.12.3.4 | Аларми и известувања базирани на критерии за пребарување |  | 5d | 2023-04-24 | 2023-04-28 |  | 9d |  | БЕ програмер 1 - Сениор; БЕ програмер 2 - Сениор | 80h | 6,400 |
| 59 | 3.12.4 | Тестирање и спецификација на ПТС |  | 85d | 2023-01-02 | 2023-04-28 |  | 9d |  | Софтвер тестер - Сениор | 680h | 20,400 |
| 60 | 3.12.5 | DevOps активности |  | 85d | 2023-01-02 | 2023-04-28 |  | 9d |  | ДО инженер - Сениор | 680h | 34,000 |
| 61 | 3.13 | Испорака и консултации со спонзор | milestone | 0d | 2023-04-28 | 2023-04-28 | 51 | 54d |  |  |  |  |
| 62 | 3.14 | **Модул за едноставно управување со документи** |  | 45d | 2023-05-01 | 2023-06-30 | 51 | 9d | 0d |  | 2520h | 141,750 |
| 63 | 3.14.1 | ССП активност |  | 45d | 2023-05-01 | 2023-06-30 |  | 9d |  | Бизнис аналитичар - Сениор | 360h | 18,000 |
| 64 | 3.14.2 | Преден (визуелен) дизајн и развој |  | 45d | 2023-05-01 | 2023-06-30 |  | 9d |  | ФЕ програмер 1 - Медиор; ФЕ програмер 2 - Сениор | 720h | 37,350 |
| 65 | 3.14.3 | **Позадински развој** |  | 45d | 2023-05-01 | 2023-06-30 |  | 9d |  |  | 720h | 57,600 |
| 66 | 3.14.3.1 | Интеграција со останатите модули |  | 35d | 2023-05-01 | 2023-06-16 |  | 19d |  | БЕ програмер 1 - Сениор; БЕ програмер 2 - Сениор | 560h | 44,800 |
| 67 | 3.14.3.2 | Интеграција со AWS S3 |  | 10d | 2023-06-19 | 2023-06-30 |  | 9d |  | БЕ програмер 1 - Сениор; БЕ програмер 2 - Сениор | 160h | 12,800 |
| 68 | 3.14.4 | Тестирање и спецификација на ПТС |  | 45d | 2023-05-01 | 2023-06-30 |  | 9d |  | Софтвер тестер - Сениор | 360h | 10,800 |
| 69 | 3.14.5 | DevOps активности |  | 45d | 2023-05-01 | 2023-06-30 |  | 9d |  | ДО инженер - Сениор | 360h | 18,000 |
| 70 | 3.15 | Испорака и консултации со спонзор | milestone | 0d | 2023-06-30 | 2023-06-30 | 62 | 9d |  |  |  |  |
| 71 | 4 | **Проекција на цени според AWS** |  | 22d | 2023-07-03 | 2023-08-01 | 14, 3 | 35d |  |  | 264h | 14,960 |
| 72 | 4.1 | Развој на документ за оперативни трошоци за cloud провајдерот |  | 22d | 2023-07-03 | 2023-08-01 |  | 35d |  | ДО инженер - Сениор; Софверски архитект [50%] | 264h | 14,960 |
| 73 | 5 | **Тренинг** |  | 42d | 2023-06-30 | 2023-08-29 | 14, 3 | 0d |  |  | 696h | 34,300 |
| 74 | 5.1 | **Развој на корисничко упатство** |  | 22d | 2023-07-03 | 2023-08-01 |  | 8d | 0d |  | 344h | 17,050 |
| 75 | 5.1.1 | Брендирање |  | 3d | 2023-07-03 | 2023-07-05 |  | 9d | 1d | ФЕ програмер 1 - Медиор | 24h | 1,050 |
| 76 | 5.1.2 | Структура |  | 2d | 2023-07-05 | 2023-07-06 |  | 8d | 0d | Сопственик на продукт; Бизнис аналитичар - Сениор | 32h | 1,600 |
| 77 | 5.1.3 | Пишување упатство |  | 18d | 2023-07-07 | 2023-08-01 | 75, 76 | 8d |  | Бизнис аналитичар - Сениор; Сопственик на продукт | 288h | 14,400 |

Notes:
- 54: Zadaca (latinica): Pozadinski razvoj
- 55: Zadaca (latinica): Prebaruvanje i filtriranje spored kriterii
- 56: Zadaca (latinica): Spodeluvanje na kamioni i posakuvani lokacii
- 57: Zadaca (latinica): Vodenje statistika spored tip na prikolka i lokacii
- 58: Zadaca (latinica): Alarmi i izvestuvanja bazirani na kriterii za prebaruvanje
- 59: Zadaca (latinica): Testiranje i specifikacija na PTS
- 60: Zadaca (latinica): DevOps aktivnosti
- 61: Zadaca (latinica): Isporaka i konsultacii so sponzor
- 62: Zadaca (latinica): Modul za ednostavno upravuvanje so dokumenti
- 63: Zadaca (latinica): SSP aktivnost
- 64: Zadaca (latinica): Preden (vizuelen) dizajn i razvoj
- 65: Zadaca (latinica): Pozadinski razvoj
- 66: Zadaca (latinica): Integracija so ostanatite moduli
- 67: Zadaca (latinica): Integracija so AWS S3
- 68: Zadaca (latinica): Testiranje i specifikacija na PTS
- 69: Zadaca (latinica): DevOps aktivnosti
- 70: Zadaca (latinica): Isporaka i konsultacii so sponzor
- 71: Zadaca (latinica): Proekcija na ceni spored AWS
- 72: Zadaca (latinica): Razvoj na dokument za operativni trošoci za cloud provajderot
- 73: Zadaca (latinica): Trening
- 74: Zadaca (latinica): Razvoj na korisničko upatstvo
- 75: Zadaca (latinica): Brendiranje
- 76: Zadaca (latinica): Struktura
- 77: Zadaca (latinica): Pišuvanje upatstvo

| ID | WBS | Task | Type | Duration | Start | Finish | Predecessors | Total slack | Free slack | Constraint | Resources | Work | Cost | Zadaca (latinica) |
| --- | --- | --- | --- | --- | --- | --- | --- | --- | --- | --- | --- | --- | --- | --- |
| 78 | 5.2 | **Развој на план и презентации за тренинг** |  | 13d | 2023-08-02 | 2023-08-18 | 74 | 0d |  |  |  | 184h | 9,200 | Razvoj na plan i prezentacii za trening |
| 79 | 5.2.1 | План и структура на тренинг |  | 3d | 2023-08-02 | 2023-08-04 |  | 10d |  |  | Сопственик на продукт; Scrum Мастер | 40h | 2,000 | Plan i struktura na trening |
| 80 | 5.2.2 | Начин на следење (онлајн или со присуство) |  | 1d | 2023-08-07 | 2023-08-07 |  | 9d |  | start no earlier than 2023-08-03 | Сопственик на продукт; Scrum Мастер | 16h | 800 | Način na sledenje (onlajn ili so prisustvo) |
| 81 | 5.2.3 | Креирање презентации |  | 5d | 2023-08-08 | 2023-08-14 |  | 4d |  | start no earlier than 2023-08-07 | Сопственик на продукт; Scrum Мастер | 80h | 4,000 | Kreiranje prezentacii |
| 82 | 5.2.4 | Креирање квизови и прашалници |  | 3d | 2023-08-15 | 2023-08-17 |  | 1d |  | start no earlier than 2023-08-15 | Сопственик на продукт; Scrum Мастер | 32h | 1,600 | Kreiranje kvizovi i prašalnici |
| 83 | 5.2.5 | Избор на ментори |  | 1d | 2023-08-18 | 2023-08-18 |  | 0d |  | start no earlier than 2023-08-18 | Scrum Мастер; Сопственик на продукт | 16h | 800 | Izbor na mentori |
| 84 | 5.3 | Селекција на луѓе за следење на обука од клиентска страна | milestone | 0d | 2023-06-30 | 2023-06-30 |  | 35d |  |  | Проектен менаџер |  |  | Selekcija na luǵe za sledenje na obuka od klientska strana |
| 85 | 5.4 | Обука на корисници |  | 7d | 2023-08-21 | 2023-08-29 | 74, 78, 84 | 0d |  |  | ФЕ програмер 1 - Медиор; Бизнис аналитичар - Сениор; Scrum Мастер | 168h | 8,050 | Obuka na korisnici |
| 86 | 6 | **Маркетинг** |  | 15d | 2023-08-30 | 2023-09-19 | 73 |  |  |  |  |  | 7,300 | Marketing |
| 87 | 6.1 | Развој на landing page |  | 14d | 2023-08-30 | 2023-09-18 |  | 1d |  |  | Фиксна цена [0.1%] |  | 2,800 | Razvoj na landing page |
| 88 | 6.2 | Дизајн на два банери |  | 4d | 2023-08-30 | 2023-09-04 |  | 11d |  |  | Фиксна цена [0.1%] |  | 300 | Dizajn na dva baneri |
| 89 | 6.3 | **Видео рекламен материјал** |  | 15d | 2023-08-30 | 2023-09-19 |  | 0d |  |  |  |  | 4,200 | Video reklamen materijal |
| 90 | 6.3.1 | Дефинирање на генерички сценарија |  | 8d | 2023-08-30 | 2023-09-08 |  | 0d |  |  | Фиксна цена [0.1%] |  | 2,000 | Definiranje na generički scenarija |
| 91 | 6.3.2 | Избор на потенцијални инфлуенсери за соработка |  | 2d | 2023-08-30 | 2023-08-31 |  | 3d | 0d |  | Фиксна цена [0.1%] |  | 200 | Izbor na potencijalni influenseri za sorabotka |
| 92 | 6.3.3 | Контактирање на избраните инфлуенсери |  | 3d | 2023-09-01 | 2023-09-05 | 91 | 3d |  |  | Фиксна цена [0.1%] |  | 600 | Kontaktiranje na izbranite influenseri |
| 93 | 6.3.4 | Снимање |  | 3d | 2023-09-11 | 2023-09-13 | 92, 90 | 0d |  |  | Фиксна цена [0.1%] |  | 1,000 | Snimanje |
| 94 | 6.3.5 | Монтажа и постпродукција |  | 4d | 2023-09-14 | 2023-09-19 | 93 | 0d |  |  | Фиксна цена [0.1%] |  | 400 | Montaža i postprodukcija |
| 95 | 7 | Крај на проектот | milestone | 0d | 2023-09-19 | 2023-09-19 | 86 | 0d |  |  |  |  |  | Kraj na proektot |
